Schedule from MS Project, 2016-04-01 to 2016-06-10, costs in R$, A marks actual dates.

## Calendars

- Padrão: Mon-Fri 09:00-12:00, 13:00-18:00; Sat-Sun off.

## Resources

| Resource | Rate | Cost per use |
| --- | --- | --- |
| Tales Abdo dos Santos | 9 |  |
| Notebook |  | 2000 |

## Schedule

| ID | WBS | Task | Duration | Start | Finish | Predecessors | Complete | Constraint | Resources | Work | Actual work | Cost | Actual cost |
| --- | --- | --- | --- | --- | --- | --- | --- | --- | --- | --- | --- | --- | --- |
| 1 | 1 | **Projeto ES2** | 51d | 2016-04-01 A | 2016-06-10 A |  | 100% |  |  | 357.6h | 357.6h | 3,218.4 | 3,218.4 |
| 2 | 1.1 | **Engenharia de Requisitos** | 9d | 2016-04-01 A | 2016-04-13 A |  | 100% |  |  | 41.6h | 41.6h | 374.4 | 374.4 |
| 3 | 1.1.1 | Elicitação de requisitos | 2d | 2016-04-01 A | 2016-04-04 A |  | 100% |  | Tales Abdo dos Santos [95%] | 15.6h | 15.6h | 140.4 | 140.4 |
| 4 | 1.1.2 | Gestão de requisitos | 1d | 2016-04-05 A | 2016-04-05 A | 3 | 100% |  | Tales Abdo dos Santos [95%] | 7.6h | 7.6h | 68.4 | 68.4 |
| 5 | 1.1.3 | Matriz de rastreabilidade | 1d | 2016-04-06 A | 2016-04-06 A | 4 | 100% |  | Tales Abdo dos Santos [95%] | 7.6h | 7.6h | 68.4 | 68.4 |
| 6 | 1.1.4 | Validação dos requisitos | 3d | 2016-04-07 A | 2016-04-11 A | 5 | 100% |  |  |  |  |  |  |
| 7 | 1.1.5 | Documento de especificação | 2d | 2016-04-12 A | 2016-04-13 A | 6 | 100% |  | Tales Abdo dos Santos [45%] | 7.2h | 7.2h | 64.8 | 64.8 |
| 8 | 1.1.6 | Documento de especificação suplementar | 1d | 2016-04-12 A | 2016-04-12 A | 6 | 100% |  | Tales Abdo dos Santos [45%] | 3.6h | 3.6h | 32.4 | 32.4 |
| 9 | 1.2 | **Modelagem** | 5d | 2016-04-14 A | 2016-04-20 A |  | 100% |  |  | 36h | 36h | 324 | 324 |
| 10 | 1.2.1 | Elaboração de diagrama de Caso de Uso | 1d | 2016-04-14 A | 2016-04-14 A | 7 | 100% |  | Tales Abdo dos Santos [90%] | 7.2h | 7.2h | 64.8 | 64.8 |
| 11 | 1.2.2 | Elaboração de Casos de Uso textuais | 2d | 2016-04-15 A | 2016-04-18 A | 10 | 100% |  | Tales Abdo dos Santos [90%] | 14.4h | 14.4h | 129.6 | 129.6 |
| 12 | 1.2.3 | DFD | 2d | 2016-04-19 A | 2016-04-20 A | 11 | 100% |  | Tales Abdo dos Santos [90%] | 14.4h | 14.4h | 129.6 | 129.6 |
| 13 | 1.3 | **Planejamento** | 4d | 2016-04-21 A | 2016-04-26 A |  | 100% |  |  | 22h | 22h | 198 | 198 |
| 14 | 1.3.1 | Contagem de FP | 1d | 2016-04-21 A | 2016-04-21 A | 12 | 100% |  | Tales Abdo dos Santos [45%] | 3.6h | 3.6h | 32.4 | 32.4 |
| 15 | 1.3.2 | Estimativas | 1d | 2016-04-21 A | 2016-04-21 A | 12 | 100% |  | Tales Abdo dos Santos [45%] | 3.6h | 3.6h | 32.4 | 32.4 |
| 16 | 1.3.3 | Elaboração de gráfico de Gantt | 1d | 2016-04-22 A | 2016-04-22 A | 15 | 100% |  | Tales Abdo dos Santos [30%] | 2.4h | 2.4h | 21.6 | 21.6 |
| 17 | 1.3.4 | Elaboração de Gantt de controle | 1d | 2016-04-22 A | 2016-04-22 A | 15 | 100% |  | Tales Abdo dos Santos [30%] | 2.4h | 2.4h | 21.6 | 21.6 |
| 18 | 1.3.5 | Elaboração de diagrama de rede | 1d | 2016-04-22 A | 2016-04-22 A | 15 | 100% |  | Tales Abdo dos Santos [30%] | 2.4h | 2.4h | 21.6 | 21.6 |
| 19 | 1.3.6 | Gerenciamento de riscos | 1d | 2016-04-25 A | 2016-04-25 A | 18 | 100% | start no earlier than 2016-04-12 | Tales Abdo dos Santos [5%] | 0.4h | 0.4h | 3.6 | 3.6 |
| 20 | 1.3.7 | Documento de Planejamento e Acompanhamento | 1d | 2016-04-26 A | 2016-04-26 A | 19 | 100% |  | Tales Abdo dos Santos [90%] | 7.2h | 7.2h | 64.8 | 64.8 |
| 21 | 1.4 | **Construção** | 32d | 2016-04-27 A | 2016-06-09 A |  | 100% |  |  | 230.4h | 230.4h | 2,073.6 | 2,073.6 |
| 22 | 1.4.1 | Prototipação | 2d | 2016-04-27 A | 2016-04-28 A | 20 | 100% |  | Tales Abdo dos Santos [90%] | 14.4h | 14.4h | 129.6 | 129.6 |
| 23 | 1.4.2 | Codificação | 22d | 2016-04-29 A | 2016-05-30 A | 22 | 100% |  | Tales Abdo dos Santos [90%] | 158.4h | 158.4h | 1,425.6 | 1,425.6 |
| 24 | 1.4.3 | Testes | 6d | 2016-05-31 A | 2016-06-07 A | 23 | 100% |  | Tales Abdo dos Santos [90%] | 43.2h | 43.2h | 388.8 | 388.8 |
| 25 | 1.4.4 | Elaboração Manual de Uso | 2d | 2016-06-08 A | 2016-06-09 A | 24 | 100% |  | Tales Abdo dos Santos [90%] | 14.4h | 14.4h | 129.6 | 129.6 |

| ID | WBS | Task | Duration | Start | Finish | Predecessors | Complete | Constraint | Resources | Work | Actual work | Cost | Actual cost |
| --- | --- | --- | --- | --- | --- | --- | --- | --- | --- | --- | --- | --- | --- |
| 26 | 1.5 | **Emprego** | 1d | 2016-06-10 A | 2016-06-10 A |  | 100% |  |  | 7.2h | 7.2h | 64.8 | 64.8 |
| 27 | 1.5.1 | Homologação | 1d | 2016-06-10 A | 2016-06-10 A | 25 | 100% |  | Tales Abdo dos Santos [90%] | 7.2h | 7.2h | 64.8 | 64.8 |
| 28 | 1.6 | Controle de versionamento | 51d | 2016-04-01 A | 2016-06-10 A | 3SS | 100% | start no earlier than 2016-04-01 | Tales Abdo dos Santos [5%] | 20.4h | 20.4h | 183.6 | 183.6 |
